# HCX SC Magnet Development

Schedule from MS Project, 2009-12-01 to 2022-12-16.

## Calendars

- LARP Calendar: Mon-Fri 08:00-12:00, 13:00-17:00; Sat-Sun off. Exceptions (off unless hours are given): 2009-12-24 to 2009-12-30, 2009-12-31 to 2010-01-02 08:00-12:00, 13:00-17:00, 2010-05-31, 2010-07-05, 2010-09-06, 2010-11-25 to 2010-11-26, 2010-12-24 to 2010-12-31, 2012-01-01 08:00-12:00, 13:00-17:00, 2014-05-31 to 2014-06-01 08:00-12:00, 13:00-17:00, 2017-10-01 08:00-12:00, 13:00-17:00.

## Schedule

| ID | WBS | Task | Type | Duration | Start | Finish | Predecessors | Baseline start | Baseline finish | Baseline duration | Total slack | Free slack | Constraint |
| --- | --- | --- | --- | --- | --- | --- | --- | --- | --- | --- | --- | --- | --- |
| 1 | 1 | **Technology demonstration** |  | 1315d | 2009-12-01 | 2014-12-31 |  |  |  |  | 2078d |  |  |
| 2 | 1.1 | LQS01/2 tests (RRP 54/61) |  | 529d | 2009-12-01 | 2011-12-30 |  | 2002-02-19 | 2002-03-18 | 4w | 2612d | 5d | finish no earlier than 2011-12-30 |
| 3 | 1.2 | LQS03 tests (RRP 108/127) |  | 251d | 2012-01-06 | 2012-12-21 | 2 | 2002-02-19 | 2002-03-18 | 4w | 2607d | 529d | finish no earlier than 2012-12-21 |
| 4 | 1.3 | HQ/HQM tests |  | 960d | 2010-04-01 | 2013-12-18 |  | 2002-02-19 | 2002-03-18 | 4w | 2349d | 271d | start no earlier than 2010-04-01 |
| 5 | 1.4 | LHQ design and tooling |  | 650d | 2010-12-06 | 2013-06-07 |  | 2002-02-19 | 2002-03-18 | 4w | 2188d | 0d | start no earlier than 2010-12-06 |
| 6 | 1.5 | LHQ cable and coil fabrication |  | 650d | 2012-02-06 | 2014-07-30 | 5SS+300d | 2002-02-19 | 2002-03-18 | 4w | 2188d | 9d | finish no earlier than 2012-10-01 |
| 7 | 1.6 | LHQ assembly and tests |  | 370d | 2013-08-02 | 2014-12-30 | 6SS+380d | 2002-02-19 | 2002-03-18 | 4w | 2078d | 0d | finish no earlier than 2014-12-30 |
| 8 | 1.7 | Technology selection | milestone | 1d | 2014-12-31 | 2014-12-31 | 3, 4, 7 |  |  |  | 2078d |  | start no earlier than 2012-10-01 |
| 9 | 2 | **Prototype development** |  | 1730d | 2011-11-01 | 2018-06-12 |  |  |  |  | 908d |  |  |
| 10 | 2.1 | IR Quad short model design/fab |  | 805d | 2012-03-01 | 2015-03-30 |  | 2002-02-19 | 2002-03-18 | 4w | 588d | 23d | finish no earlier than 2015-03-30 |
| 11 | 2.2 | IR Quad short model test |  | 175d | 2015-05-01 | 2015-12-31 | 10 | 2002-02-19 | 2002-03-18 | 4w | 1816d | 42d | finish no earlier than 2015-12-31 |
| 12 | 2.3 | HQ double-length model |  | 699d | 2013-05-01 | 2015-12-31 |  | 2002-02-19 | 2002-03-18 | 4w | 565d | 42d | finish no earlier than 2015-12-31 |
| 13 | 2.4 | HL-LHC Design Study |  | 1091d | 2011-11-01 | 2015-12-31 |  | 2002-02-19 | 2002-03-18 | 4w | 565d | 42d | finish no earlier than 2015-12-31 |
| 14 | 2.5 | HL-LHC TDR | milestone | 1d | 2016-03-01 | 2016-03-01 | 11, 12, 13 | 2002-02-19 | 2002-03-18 | 4w | 523d | 65d | start no earlier than 2016-03-01 |
| 15 | 2.6 | LHQ double-length model |  | 785d | 2014-01-01 | 2016-12-30 |  | 2002-02-19 | 2002-03-18 | 4w | 1556d |  | finish no earlier than 2016-12-30 |
| 16 | 2.7 | IR Quad Prototype |  | 900d | 2015-01-01 | 2018-06-12 |  | 2002-02-19 | 2002-03-18 | 4w | 78d | 0d | start no earlier than 2015-01-01 |
| 17 | 3 | **Construction Project** |  | 1687d | 2016-07-01 | 2022-12-16 |  |  |  |  | 0d |  |  |
| 18 | 3.1 | Long lead procurements |  | 250d | 2016-07-01 | 2017-06-15 |  | 2002-02-19 | 2002-03-18 | 4w | 437d | 0d | start no earlier than 2016-07-01 |
| 19 | 3.2 | Coil and structure fabrication |  | 1000d | 2017-06-16 | 2021-04-14 | 18 | 2002-02-19 | 2002-03-18 | 4w | 437d | 109d | finish no earlier than 2019-05-31 |
| 20 | 3.3 | Magnet assembly |  | 800d | 2018-06-13 | 2021-07-06 | 19SS+150d, 16, 19 | 2002-02-19 | 2002-03-18 | 4w | 78d | 0d | start no earlier than 2017-10-10 |
| 21 | 3.4 | Cryostat assembly & test |  | 750d | 2018-10-31 | 2021-09-14 | 20SS+100d | 2002-02-19 | 2002-03-18 | 4w | 78d | 0d | finish no earlier than 2019-12-02 |
| 22 | 3.5 | String Tests |  | 600d | 2019-05-29 | 2021-09-14 | 21SS+150d | 2002-02-19 | 2002-03-18 | 4w | 78d |  | finish no earlier than 2019-12-02 |
| 23 | 3.6 | Installation |  | 250d | 2022-01-03 | 2022-12-16 | 22, 21 | 2002-02-19 | 2002-03-18 | 4w | 0d |  | start no earlier than 2022-01-03 |
